Schedule from MS Project XML, 2021-06-22 to 2022-01-04.

## Calendars

- Standard[Imported][Imported]: Mon-Fri 08:00-12:00, 13:00-17:00; Sat-Sun off.

## Resources

| Resource |
| --- |
| Unassigned |
| Peter |
| George |
| External |

## Schedule

| ID | WBS | Task | Type | Duration | Start | Finish | Predecessors | Complete | Constraint | Resources |
| --- | --- | --- | --- | --- | --- | --- | --- | --- | --- | --- |
| 1 | 1 | **External milestones** |  | 0d | 2021-06-22 | 2021-06-22 |  |  |  |  |
| 2 | 1.1 | Motor Arrives | milestone | 0d | 2021-06-22 | 2021-06-22 |  |  |  | External |
| 3 | 1.2 | VCU Arrives | milestone | 0d | 2021-06-22 | 2021-06-22 |  |  |  | External |
| 4 | 2 | **Project Milestones** |  | 126d | 2021-07-12 | 2022-01-04 |  |  |  |  |
| 5 | 2.1 | M1: Motor Spin | milestone | 0d | 2021-07-12 | 2021-07-12 | 20 |  |  |  |
| 6 | 2.2 | Motor Fitted | milestone | 0d | 2021-10-12 | 2021-10-12 | 21 |  |  |  |
| 7 | 2.4 | Battery Design | milestone | 0d | 2021-08-30 | 2021-08-30 | 36 |  |  |  |
| 8 | 2.5 | Auxiliary Equipment | milestone | 0d | 2021-07-30 | 2021-07-30 | 50 |  |  |  |
| 9 | 2.6 | Charging System | milestone | 0d | 2021-07-27 | 2021-07-27 | 64 |  |  |  |
| 10 | 2.7 | Functional Battery Pack | milestone | 0d | 2021-12-22 | 2021-12-22 | 70 |  |  |  |
| 11 | 2.8 | Engineering Approval | milestone | 0d | 2021-12-30 | 2021-12-30 | 87 |  |  |  |
| 12 | 2.9 | Registered Vehicle | milestone | 0d | 2022-01-04 | 2022-01-04 | 90 |  |  |  |
| 13 | 4 | **Motor Spinning Prep** |  | 14d | 2021-06-22 | 2021-07-09 |  | 76% |  |  |
| 14 | 4.1 | Bench PSU (340v) |  | 14d | 2021-06-22 | 2021-07-09 |  | 100% |  | Peter |
| 15 | 4.2 | VCU setup |  | 1d | 2021-06-22 | 2021-06-22 | 3 |  |  | George |
| 16 | 4.3 | 12v PSU setup |  | 0d | 2021-06-22 | 2021-06-22 |  |  |  | George |
| 17 | 4.4 | Bench and location |  | 2d | 2021-06-22 | 2021-06-23 |  | 25% |  | George |
| 18 | 4.5 | Remove existing Controller |  | 1d | 2021-06-22 | 2021-06-22 | 2 |  |  | George |
| 19 | 4.6 | Coolant Pump setup |  | 1d | 2021-06-22 | 2021-06-22 | 2, 16 |  |  | George |
| 20 | 5 | Motor Spin Assemble and Test |  | 1d | 2021-07-12 | 2021-07-12 | 2, 3, 13 |  |  | George; Peter |
| 21 | 6 | **Fit Motor** |  | 81d | 2021-06-22 | 2021-10-12 |  | 3% |  |  |
| 22 | 5.1 | Study relevant legislation |  | 2d | 2021-06-22 | 2021-06-23 |  |  |  |  |
| 23 | 6.1 | Expore mounting and coupling ideas |  | 10d | 2021-08-02 | 2021-08-13 | 2, 30 |  |  |  |
| 24 | 6.5 | Design coupling and mounts |  | 5d | 2021-08-16 | 2021-08-20 | 22, 23 |  |  |  |
| 25 | 5.4 | Get engineering approval |  | 2d | 2021-08-23 | 2021-08-24 | 24, 88 |  |  |  |
| 26 | 6.2 | Fabricate components |  | 14d | 2021-08-25 | 2021-09-13 | 24, 25 |  |  |  |
| 27 | 5.6 | Design weight distribution measurement rig |  | 2d | 2021-06-22 | 2021-06-23 |  | 100% |  |  |
| 28 | 5.7 | Build weight distribution measurment rig |  | 1d | 2021-06-24 | 2021-06-24 | 27 |  |  |  |
| 29 | 5.8 | Measure weight distribution |  | 1d | 2021-06-25 | 2021-06-25 | 28 |  |  |  |
| 30 | 5.9 | Remove ICE components |  | 2d | 2021-07-29 | 2021-07-30 | 29 |  | as late as possible |  |
| 31 | 5.10 | Measure weight distribution with no components |  | 1d | 2021-08-02 | 2021-08-02 | 30 |  |  |  |
| 32 | 6.3 | Mount the motor |  | 10d | 2021-09-14 | 2021-09-27 | 26, 31 |  |  |  |
| 33 | 6.4 | Test in place |  | 1d | 2021-09-28 | 2021-09-28 | 32, 20 |  |  |  |
| 34 | 5.13 | Resolve issues from testing |  | 10d | 2021-09-29 | 2021-10-12 | 33 |  |  |  |
| 35 | 5.14 | Re-measure weight distribution |  | 1d | 2021-09-28 | 2021-09-28 | 32 |  |  |  |

| ID | WBS | Task | Duration | Start | Finish | Predecessors | Resources |
| --- | --- | --- | --- | --- | --- | --- | --- |
| 36 | 7 | **Design Battery** | 50d | 2021-06-22 | 2021-08-30 |  |  |
| 37 | 6.1 | Research cell chemistry and format | 5d | 2021-06-22 | 2021-06-28 |  |  |
| 38 | 7.1 | Research mechanical structure (modules) | 5d | 2021-06-22 | 2021-06-28 |  |  |
| 39 | 7.2 | Research physical distribution in vehicle | 5d | 2021-06-22 | 2021-06-28 |  |  |
| 40 | 6.4 | **Detailed battery design** | 20d | 2021-08-03 | 2021-08-30 | 31, 37, 38, 39 |  |
| 41 | 6.4.1 | Design battery | 15d | 2021-08-03 | 2021-08-23 |  |  |
| 42 | 6.4.2 | Design battery mounting | 5d | 2021-08-24 | 2021-08-30 | 41 |  |
| 43 | 6.4.3 | Get engineering approval | 2d | 2021-08-03 | 2021-08-04 | 88 |  |
| 44 | 11.2 | Design BMS | 5d | 2021-06-29 | 2021-07-05 | 37 |  |
| 45 | 7.3 | **Design Battery Cooling** | 45d | 2021-06-29 | 2021-08-30 |  |  |
| 46 | 7.3.1 | Initial Designs | 5d | 2021-06-29 | 2021-07-05 | 37, 38 |  |
| 47 | 7.3.2 | Modelling/prototyping | 20d | 2021-07-06 | 2021-08-02 | 46 |  |
| 48 | 7.3.3 | Model/prototype evaluation | 5d | 2021-08-03 | 2021-08-09 | 47 |  |
| 49 | 7.3.4 | Iteration | 15d | 2021-08-10 | 2021-08-30 | 48 |  |
| 50 | 9 | **Construct and Mount Aux Equipment** | 27d? | 2021-06-24 | 2021-07-30 | 22 |  |
| 51 | 9.2 | **12V System** | 22d | 2021-06-24 | 2021-07-23 |  |  |
| 52 | 9.2.1 | Explore DC/DC charger options | 2d | 2021-06-24 | 2021-06-25 |  |  |
| 53 | 7.1.2 | Procure DC/DC charger | 15d | 2021-06-28 | 2021-07-16 | 52 | External |
| 54 | 7.1.3 | Install DC/DC charger | 5d | 2021-07-19 | 2021-07-23 | 53 |  |
| 55 | 7.2 | **Speedometer sytem** | 9d | 2021-06-24 | 2021-07-06 |  |  |
| 56 | 7.2.1 | Understand current speedo design | 1d | 2021-06-24 | 2021-06-24 |  |  |
| 57 | 7.2.2 | Design replacement system | 3d | 2021-06-25 | 2021-06-29 | 56 |  |
| 58 | 7.2.3 | Build/install replacement system | 5d | 2021-06-30 | 2021-07-06 | 57 |  |
| 59 | 9.1 | **Vacuum System** | 27d? | 2021-06-24 | 2021-07-30 |  |  |
| 60 | 9.1.1 | Explore OEM vacuum brake pump options | 2d | 2021-06-24 | 2021-06-25 | 22 |  |
| 61 | 7.3.2 | Get engineering approval | 1d? | 2021-06-29 | 2021-06-29 | 88 |  |
| 62 | 7.3.3 | Procure brake pump | 15d | 2021-06-30 | 2021-07-20 | 60, 61 | External |
| 63 | 7.3.4 | Install brake pump | 5d | 2021-07-26 | 2021-07-30 | 51, 62 |  |

| ID | WBS | Task | Duration | Start | Finish | Predecessors | Resources |
| --- | --- | --- | --- | --- | --- | --- | --- |
| 64 | 10 | **Construct and Install Battery Charger** | 26d | 2021-06-22 | 2021-07-27 |  |  |
| 65 | 8.1 | Research options | 5d | 2021-06-22 | 2021-06-28 |  |  |
| 66 | 10.1 | Source components and materials | 15d | 2021-06-29 | 2021-07-19 | 65 | External |
| 67 | 10.2 | Build | 3d | 2021-07-20 | 2021-07-22 | 66 |  |
| 68 | 10.3 | Install | 2d | 2021-07-23 | 2021-07-26 | 67 |  |
| 69 | 10.4 | Test | 1d | 2021-07-27 | 2021-07-27 | 68 |  |
| 70 | 11 | **Construct and Install Final Battery Pack** | 82d | 2021-08-31 | 2021-12-22 | 36 |  |
| 71 | 11.1 | Source Components and materials | 30d | 2021-08-31 | 2021-10-11 |  | External |
| 72 | 11.5 | Build Modules | 30d | 2021-10-12 | 2021-11-22 | 71, 44 |  |
| 73 | 13.2 | **Test jig** | 15d | 2021-11-23 | 2021-12-13 | 72 |  |
| 74 | 9.3.1 | Design test jig | 10d | 2021-11-23 | 2021-12-06 |  |  |
| 75 | 9.3.2 | Build test jig | 5d | 2021-12-07 | 2021-12-13 | 74 |  |
| 76 | 9.4 | Test modules | 5d | 2021-12-14 | 2021-12-20 | 72, 73 |  |
| 77 | 9.5 | Construct mounting | 20d | 2021-08-31 | 2021-09-27 |  |  |
| 78 | 11.3 | Install | 5d | 2021-12-14 | 2021-12-20 | 73, 77 |  |
| 79 | 11.4 | Installed battery testing | 2d | 2021-12-21 | 2021-12-22 | 78 |  |
| 80 | 10 | **Vehicle Testing** | 1d | 2021-12-23 | 2021-12-23 | 70 |  |
| 81 | 10.1 | Basic drive | 1d | 2021-12-23 | 2021-12-23 |  |  |
| 82 | 10.2 | Range test | 1d | 2021-12-23 | 2021-12-23 |  |  |
| 83 | 10.3 | Speed/power test | 1d | 2021-12-23 | 2021-12-23 |  |  |
| 84 | 10.4 | Temperature testing | 1d | 2021-12-23 | 2021-12-23 |  |  |
| 85 | 10.5 | 4WD test | 1d | 2021-12-23 | 2021-12-23 |  |  |
| 86 | 10.6 | Compliance test | 1d | 2021-12-23 | 2021-12-23 |  |  |
| 87 | 12 | **Get Engineering Approval** | 138d | 2021-06-22 | 2021-12-30 |  |  |
| 88 | 12.1 | Find a suitable engineer | 5d | 2021-06-22 | 2021-06-28 |  |  |
| 89 | 11.2 | Present car with evidence of compliance with legislation | 5d | 2021-12-24 | 2021-12-30 | 80, 88 |  |

| ID | WBS | Task | Duration | Start | Finish | Predecessors |
| --- | --- | --- | --- | --- | --- | --- |
| 90 | 13 | **Register the vehicle** | 3d | 2021-12-31 | 2022-01-04 | 87 |
| 91 | 13.1 | Go over pits | 1d | 2021-12-31 | 2021-12-31 | 87 |
| 92 | 12.2 | Get plates from DOT | 1d | 2022-01-03 | 2022-01-03 | 91 |
| 93 | 12.3 | Install plates | 1d | 2022-01-04 | 2022-01-04 | 92 |
